# 甘特图1

Schedule from MS Project, 2017-09-28 to 2018-01-17, status date 2017-11-11, 3 hours a day, costs in ¥, A marks actual dates.

## Calendars

- “24 小时”的副本: Mon-Sun 19:00-21:00.

## Resources

| Resource | Rate |
| --- | --- |
| 李文杰 | 30.97 |
| 赵伟 | 28.83 |
| 陈启强 | 28.83 |
| 余泽伟 | 28.83 |

## Schedule

| ID | WBS | Task | Type | Duration | Start | Finish | Predecessors | Complete | Remaining | Actual start | Baseline start | Baseline finish | Baseline duration | Constraint | Resources | Work | Actual work | Cost | Baseline cost | Actual cost |
| --- | --- | --- | --- | --- | --- | --- | --- | --- | --- | --- | --- | --- | --- | --- | --- | --- | --- | --- | --- | --- |
| 1 | 11 | **项目启动** |  | 15.33d | 2017-09-28 A | 2017-10-20 A |  | 100% |  |  | 2017-09-28 | 2017-10-20 | 15.33d |  |  | 72.35h | 72.35h | 2,096.66 | 2,085.85 | 2,096.66 |
| 2 | 11.1 | 团队建立 | manual | 0.67d | 2017-09-28 A | 2017-09-28 A |  | 100% |  |  | 2017-09-28 | 2017-09-28 | 0.67d |  | 李文杰 [50%]; 余泽伟 [50%]; 赵伟 [50%]; 陈启强 [50%] | 3.05h | 3.05h | 88.04 | 87.93 | 88.04 |
| 3 | 11.2 | 搜集文档模板并确定模版标准 | manual | 2d | 2017-09-29 A | 2017-10-01 A | 2 | 100% |  |  | 2017-09-29 | 2017-10-01 | 2d |  | 李文杰 [50%]; 赵伟 [50%]; 余泽伟 [50%]; 陈启强 [50%] | 12h | 12h | 352.38 | 345.96 | 352.38 |
| 4 | 11.3 | 软件安装 | manual | 3.33d | 2017-10-02 A | 2017-10-06 A | 3 | 100% |  |  | 2017-10-02 | 2017-10-06 | 3.33d |  | 李文杰 [20%]; 余泽伟 [20%]; 赵伟 [20%]; 陈启强 [20%] | 8h | 8h | 234.92 | 230.64 | 234.92 |
| 5 | 11.4 | 撰写《可行性研究报告》并进行初次提交 | manual | 4d | 2017-10-02 A | 2017-10-07 A | 3 | 100% |  |  | 2017-10-02 | 2017-10-07 | 4d | start no earlier than 2017-10-08 | 赵伟 | 12h | 12h | 345.96 | 345.96 | 345.96 |
| 6 | 11.5 | 撰写《项目开发设计》报告并进行初次提交 | manual | 4d | 2017-10-08 A | 2017-10-13 A | 2, 3, 4, 5 | 100% |  |  | 2017-10-08 | 2017-10-13 | 4d |  | 陈启强 | 12h | 12h | 345.96 | 345.96 | 345.96 |
| 7 | 11.6 | 修改《可行性研究报告》 | manual | 4.67d | 2017-10-08 A | 2017-10-14 A | 5 | 100% |  |  | 2017-10-08 | 2017-10-14 | 4.67d | start no earlier than 2017-10-13 | 余泽伟 [80%] | 11.2h | 11.2h | 322.9 | 322.9 | 322.9 |
| 8 | 11.7 | 修改《项目开发设计》报告 | manual | 4.67d | 2017-10-14 A | 2017-10-20 A | 6 | 100% |  |  | 2017-10-14 | 2017-10-20 | 4.67d |  | 陈启强 | 14h | 14h | 403.62 | 403.62 | 403.62 |
| 9 | 11.8 | 提交《可行性研究报告》与《项目开发设计》报告 | manual | 0.67d | 2017-10-15 A | 2017-10-15 A | 7 | 100% |  |  | 2017-10-15 | 2017-10-15 | 0.67d |  | 陈启强 [5%] | 0.1h | 0.1h | 2.88 | 2.88 | 2.88 |
| 10 | 12 | **项目规划** |  | 10d | 2017-10-20 | 2017-11-03 | 1 | 81% | 1.86d | 2017-09-29 | 2017-10-20 | 2017-11-03 | 10d |  |  | 359.8h | 247.3h | 10,563.49 | 5,817.89 | 7,252.71 |
| 11 | 12.8 | 撰写WBS图、OBS图、gantt图 | manual | 1.33d | 2017-10-16 A | 2017-10-17 A | 9 | 100% |  |  | 2017-10-16 | 2017-10-17 | 1.33d | start no earlier than 2017-10-23 | 李文杰; 陈启强; 余泽伟 | 12h | 12h | 354.52 | 345.96 | 354.52 |
| 12 | 12.1 | 撰写《项目章程》 | manual | 3.33d | 2017-10-16 A | 2017-10-20 A | 9 | 100% |  |  | 2017-10-16 | 2017-10-20 | 3.33d | start no earlier than 2017-10-20 | 余泽伟 | 10h | 10h | 288.3 | 288.3 | 288.3 |
| 13 | 12.2 | 撰写《项目总体计划》 | manual | 3.33d | 2017-10-16 A | 2017-10-20 A | 9 | 100% |  |  | 2017-10-16 | 2017-10-20 | 3.33d | start no earlier than 2017-10-23 | 李文杰 | 10h | 10h | 309.7 | 576.6 | 309.7 |
| 14 | 12.3 | 撰写《需求工程计划--初步》并提交 | manual | 3.33d | 2017-10-16 A | 2017-10-20 A | 9 | 100% |  |  | 2017-10-16 | 2017-10-20 | 3.33d |  | 赵伟 | 10h | 10h | 288.3 | 288.3 | 288.3 |
| 15 | 12.4 | UML概述ppt制作 | manual | 2.67d | 2017-10-25 A | 2017-10-28 A |  | 100% |  |  | 2017-10-25 | 2017-10-28 | 2.67d |  | 余泽伟 | 8h | 8h | 230.64 | 230.64 | 230.64 |
| 16 | 12.5 | UML概述ppt制作 | manual | 2.67d | 2017-10-25 A | 2017-10-28 A |  | 100% |  |  | 2017-10-25 | 2017-10-28 | 2.67d |  | 赵伟 | 8h | 8h | 230.64 | 230.64 | 230.64 |
| 17 | 12.6 | UML概述ppt制作 | manual | 2.33d | 2017-11-10 A | 2017-11-12 |  | 36% | 1.5d |  | 2017-11-10 | 2017-11-12 | 2.33d |  | 李文杰 | 7h | 2.5h | 216.79 | 201.81 | 77.43 |
| 18 | 12.7 | UML概述ppt制作 | manual | 2.67d | 2017-10-25 A | 2017-10-28 A |  | 100% |  |  | 2017-10-25 | 2017-10-28 | 2.67d |  | 余泽伟 | 8h | 8h | 230.64 | 230.64 | 230.64 |
| 19 | 12.24 | 例会 | manual | 1d | 2017-09-29 A | 2017-09-29 A |  | 100% |  |  |  |  |  |  | 陈启强; 李文杰; 余泽伟; 赵伟 | 12h | 12h | 352.38 |  | 352.38 |
| 20 | 12.23 | 例会 | manual | 1d | 2017-10-13 A | 2017-10-13 A |  | 100% |  |  |  |  |  |  | 陈启强; 李文杰; 余泽伟; 赵伟 | 12h | 12h | 352.38 |  | 352.38 |
| 21 | 12.22 | 例会 | manual | 1d | 2017-10-20 A | 2017-10-20 A |  | 100% |  |  |  |  |  |  | 陈启强; 李文杰; 余泽伟; 赵伟 | 12h | 12h | 352.38 |  | 352.38 |
| 22 | 12.21 | 例会 | manual | 1d | 2017-10-27 A | 2017-10-27 A |  | 100% |  |  |  |  |  |  | 陈启强; 李文杰; 余泽伟; 赵伟 | 12h | 12h | 352.38 |  | 352.38 |
| 23 | 12.20 | 例会 | manual | 1d | 2017-11-04 A | 2017-11-04 A |  | 100% |  |  |  |  |  |  | 陈启强; 李文杰; 余泽伟; 赵伟 | 12h | 12h | 352.38 |  | 352.38 |
| 24 | 12.19 | 例会 | manual | 1d | 2017-11-11 | 2017-11-11 |  |  |  |  |  |  |  |  | 陈启强; 李文杰; 余泽伟; 赵伟 | 12h |  | 352.38 |  |  |
| 25 | 12.18 | 例会 | manual | 1d | 2017-11-17 | 2017-11-17 |  |  |  |  |  |  |  |  | 陈启强; 李文杰; 余泽伟; 赵伟 | 12h |  | 352.38 |  |  |
| 26 | 12.17 | 例会 | manual | 1d | 2017-11-24 | 2017-11-24 |  |  |  |  |  |  |  |  | 陈启强; 李文杰; 余泽伟; 赵伟 | 12h |  | 352.38 |  |  |
| 27 | 12.16 | 例会 | manual | 1d | 2017-12-01 | 2017-12-01 |  |  |  |  |  |  |  |  | 陈启强; 李文杰; 余泽伟; 赵伟 | 12h |  | 352.38 |  |  |
| 28 | 12.15 | 例会 | manual | 1d | 2017-12-08 | 2017-12-08 |  |  |  |  |  |  |  |  | 陈启强; 李文杰; 余泽伟; 赵伟 | 12h |  | 352.38 |  |  |
| 29 | 12.26 | 例会 | manual | 1d | 2017-12-15 | 2017-12-15 |  |  |  |  |  |  |  |  | 陈启强; 李文杰; 余泽伟; 赵伟 | 12h |  | 352.38 |  |  |
| 30 | 12.25 | 例会 | manual | 1d | 2017-12-22 | 2017-12-22 |  |  |  |  |  |  |  |  | 陈启强; 李文杰; 余泽伟; 赵伟 | 12h |  | 352.38 |  |  |
| 31 | 12.14 | 例会 | manual | 1d | 2017-12-29 | 2017-12-29 |  |  |  |  |  |  |  |  | 陈启强; 李文杰; 余泽伟; 赵伟 | 12h |  | 352.38 |  |  |
| 32 | 12.27 | 例会 | manual | 1d | 2018-01-05 | 2018-01-05 |  |  |  |  |  |  |  |  | 陈启强; 李文杰; 余泽伟; 赵伟 | 12h |  | 352.38 |  |  |
| 33 | 12.9 | 提交《项目章程》、《项目总体计划》 | manual | 0.67d | 2017-10-25 A | 2017-10-25 A | 13, 12 | 100% |  |  | 2017-10-25 | 2017-10-25 | 0.67d |  | 陈启强 [5%] | 0.1h | 0.1h | 2.88 | 2.88 | 2.88 |
| 34 | 12.10 | 撰写《QA计划》 | manual | 4.83d | 2017-10-30 A | 2017-11-05 A | 33 | 100% |  |  | 2017-10-30 | 2017-11-05 | 4.83d |  | 赵伟 | 14.5h | 14.5h | 418.03 | 418.03 | 418.03 |
| 35 | 12.11 | 提交《QA计划》和项目各类修改文档 | manual | 0.67d | 2017-11-05 A | 2017-11-05 A | 34 | 100% |  |  | 2017-11-05 | 2017-11-05 | 0.67d |  | 陈启强 [10%] | 0.2h | 0.2h | 5.77 | 5.77 | 5.77 |
| 36 | 12.12 | 修改《需求工程项目计划》 | manual | 4.67d | 2017-10-28 A | 2017-11-03 A | 14 | 100% |  |  | 2017-10-28 | 2017-11-03 | 4.67d |  | 余泽伟; 陈启强; 李文杰; 赵伟 | 56h | 56h | 1,644.44 | 1,614.48 | 1,644.44 |

| ID | WBS | Task | Type | Duration | Start | Finish | Predecessors | Complete | Remaining | Actual start | Actual finish | Baseline start | Baseline finish | Baseline duration | Constraint | Resources | Work | Actual work | Cost | Baseline cost | Actual cost |
| --- | --- | --- | --- | --- | --- | --- | --- | --- | --- | --- | --- | --- | --- | --- | --- | --- | --- | --- | --- | --- | --- |
| 37 | 12.13 | **修改《需求工程项目计划》** |  | 4d | 2017-10-21 A | 2017-10-26 | 14 | 100% |  |  | 2017-10-23 | 2016-11-01 | 2016-11-06 | 4d |  |  | 48h | 48h | 1,409.52 | 1,383.84 | 1,409.52 |
| 38 | 12.13.1 | 修改《成本管理计划》 | manual | 2d | 2017-10-21 A | 2017-10-23 A | 14 | 100% |  |  |  | 2017-10-21 | 2017-10-23 | 2d |  | 赵伟 | 6h | 6h | 172.98 | 172.98 | 172.98 |
| 39 | 12.13.2 | 修改《风险管理计划》 | manual | 2d | 2017-10-21 A | 2017-10-23 A | 14 | 100% |  |  |  | 2017-10-21 | 2017-10-23 | 2d |  | 赵伟 | 6h | 6h | 172.98 | 172.98 | 172.98 |
| 40 | 12.13.3 | 修改《范围管理计划》 | manual | 2d | 2017-10-21 A | 2017-10-23 A | 14 | 100% |  |  |  | 2017-10-21 | 2017-10-23 | 2d |  | 余泽伟 | 6h | 6h | 172.98 | 172.98 | 172.98 |
| 41 | 12.13.4 | 修改《质量管理计划》 | manual | 2d | 2017-10-21 A | 2017-10-23 A | 14 | 100% |  |  |  | 2017-10-21 | 2017-10-23 | 2d |  | 李文杰 | 6h | 6h | 185.82 | 172.98 | 185.82 |
| 42 | 12.13.5 | 修改《人力资源管理计划》 | manual | 2d | 2017-10-21 A | 2017-10-23 A | 14 | 100% |  |  |  | 2017-10-21 | 2017-10-23 | 2d |  | 陈启强; 李文杰; 余泽伟; 赵伟 | 24h | 24h | 704.76 | 691.92 | 704.76 |
| 43 | 13 | **项目执行** |  | 34.67d | 2017-11-05 | 2017-12-26 | 10 | 16% | 29.12d | 2017-11-04 |  | 2017-11-05 | 2017-12-26 | 34.67d |  |  | 294.6h | 52.1h | 8,665.37 | 5,853.93 | 1,537.99 |
| 44 | 13.1 | 《需求工程项目计划》评审 | milestone, manual | 2.67d | 2017-11-04 A | 2017-11-07 A | 36 | 100% |  |  |  | 2017-11-04 | 2017-11-07 | 2.67d | start no earlier than 2017-11-03 | 李文杰; 余泽伟; 赵伟; 陈启强 | 32h | 32h | 939.68 | 922.56 | 939.68 |
| 45 | 13.2 | 修改《需求工程项目计划》 | manual | 1.33d | 2017-11-06 A | 2017-11-07 A | 44 | 100% |  |  |  | 2017-11-06 | 2017-11-07 | 1.33d |  | 李文杰 [80%] | 3.2h | 3.2h | 99.1 | 92.26 | 99.1 |
| 46 | 13.3 | 提交《需求工程项目计划》 | manual | 0.67d | 2017-11-08 A | 2017-11-08 A | 45 | 100% |  |  |  | 2017-11-08 | 2017-11-08 | 0.67d |  | 赵伟 [5%] | 0.1h | 0.1h | 2.88 | 2.88 | 2.88 |
| 47 | 13.4 | **需求分析** |  | 29.33d | 2017-11-13 | 2017-12-26 | 44 | 8% | 27.12d | 2017-11-08 |  | 2017-11-13 | 2017-12-26 | 29.33d |  |  | 259.3h | 16.8h | 7,623.71 | 4,836.23 | 496.33 |
| 48 | 13.4.1 | **撰写《用户代表确认文档》** |  | 1.33d | 2017-11-14 | 2017-11-15 | 44 | 100% |  | 2017-11-08 | 2017-11-08 | 2017-11-14 | 2017-11-15 | 1.33d |  |  | 6h | 6h | 177.26 | 172.98 | 177.26 |
| 49 | 13.4.1.1 | 撰写《教师代表确认文档》 | manual | 0.67d | 2017-11-08 A | 2017-11-08 A | 44 | 100% |  |  |  | 2017-11-08 | 2017-11-08 | 0.67d |  | 李文杰 | 2h | 2h | 61.94 | 57.66 | 61.94 |
| 50 | 13.4.1.2 | 撰写《学生代表确认文档》 | manual | 0.67d | 2017-11-08 A | 2017-11-08 A | 44 | 100% |  |  |  | 2017-11-08 | 2017-11-08 | 0.67d |  | 陈启强 | 2h | 2h | 57.66 | 57.66 | 57.66 |
| 51 | 13.4.1.3 | 撰写《管理员代表确认文档》 | manual | 0.67d | 2017-11-08 A | 2017-11-08 A | 44 | 100% |  |  |  | 2017-11-08 | 2017-11-08 | 0.67d |  | 余泽伟 | 2h | 2h | 57.66 | 57.66 | 57.66 |
| 52 | 13.4.2 | 界面原型设计-初步 | manual | 5d | 2017-11-13 | 2017-11-19 | 48 |  |  |  |  | 2017-11-16 | 2017-11-18 | 2d |  | 陈启强; 余泽伟; 赵伟; 李文杰 | 60h |  | 1,761.9 | 172.98 |  |
| 53 | 13.4.3 | **撰写用例文档** |  | 3.67d | 2017-11-17 | 2017-11-22 | 52 |  |  |  |  | 2017-11-17 | 2017-11-22 | 3.67d |  |  | 28h |  | 822.22 | 691.92 |  |
| 54 | 13.4.3.1 | 撰写《教师用例文档》 | manual | 2.33d | 2017-11-24 | 2017-11-26 | 52 |  |  |  |  | 2017-11-19 | 2017-11-21 | 2d |  | 李文杰 | 7h |  | 216.79 | 172.98 |  |
| 55 | 13.4.3.2 | 撰写《学生用例文档》 | manual | 2.33d | 2017-11-24 | 2017-11-26 | 52 |  |  |  |  | 2017-11-19 | 2017-11-21 | 2d |  | 赵伟 | 7h |  | 201.81 | 172.98 |  |
| 56 | 13.4.3.3 | 撰写《管理员用例文档》 | manual | 2.33d | 2017-11-24 | 2017-11-26 | 52 |  |  |  |  | 2017-11-19 | 2017-11-21 | 2d |  | 余泽伟 | 7h |  | 201.81 | 172.98 |  |
| 57 | 13.4.3.4 | 撰写《游客用例文档》 | manual | 2.33d | 2017-11-24 | 2017-11-26 | 52 |  |  |  |  | 2017-11-19 | 2017-11-21 | 2d |  | 陈启强 | 7h |  | 201.81 | 172.98 |  |
| 58 | 13.4.4 | 《前景与范围文档》修改 | manual | 0.67d | 2017-11-19 | 2017-11-19 | 52 |  |  |  |  | 2017-11-19 | 2017-11-19 | 0.67d |  | 李文杰 | 2h |  | 61.94 | 57.66 |  |
| 59 | 13.4.5 | 提交《用例与用例文档》、界面原型、《前景与范围》、《用户群分类》 | manual | 0.67d | 2017-11-20 | 2017-11-20 | 48, 52 |  |  |  |  | 2017-11-20 | 2017-11-20 | 0.67d |  | 陈启强 [5%] | 0.1h |  | 2.88 | 2.88 |  |
| 60 | 13.4.6 | 修改《学生用例文档》 | manual | 2d | 2017-11-22 | 2017-11-24 | 59 |  |  |  |  | 2017-11-22 | 2017-11-24 | 2d |  | 赵伟 [80%] | 4.8h |  | 138.38 | 138.38 |  |
| 61 | 13.4.7 | 第一次访谈客户代表 | manual | 0.33d | 2017-11-13 | 2017-11-13 | 59 |  |  |  |  | 2017-11-07 | 2017-11-07 | 0.33d |  | 李文杰; 赵伟; 余泽伟; 陈启强 | 4h |  | 117.46 | 115.32 |  |
| 62 | 13.4.8 | 第一次访谈教师代表 | manual | 0.67d | 2017-11-27 | 2017-11-27 | 59 |  |  |  |  | 2017-11-07 | 2017-11-07 | 0.67d |  | 李文杰; 赵伟; 余泽伟; 陈启强 | 8h |  | 234.92 | 230.64 |  |
| 63 | 13.4.9 | 修改界面原型 | manual | 1.33d | 2017-11-19 | 2017-11-20 | 52 |  |  |  |  | 2017-11-19 | 2017-11-20 | 1.33d |  | 陈启强 | 4h |  | 115.32 | 115.32 |  |
| 64 | 13.4.10 | 修改《教师用例文档》 | manual | 1.33d | 2017-11-22 | 2017-11-23 | 54 |  |  |  |  | 2017-11-22 | 2017-11-23 | 1.33d |  | 李文杰 [80%] | 3.2h |  | 99.1 | 92.26 |  |
| 65 | 13.4.11 | 修改《学生用例文档》 | manual | 2d | 2017-12-01 | 2017-12-03 | 62 |  |  |  |  | 2017-12-01 | 2017-12-03 | 2d |  | 陈启强 [80%] | 4.8h |  | 138.38 | 138.38 |  |
| 66 | 13.4.12 | 草拟需求规格说明书 | manual | 2d | 2017-11-21 | 2017-11-23 | 59 |  |  |  |  | 2017-11-21 | 2017-11-23 | 2d |  | 陈启强; 李文杰; 余泽伟; 赵伟 | 24h |  | 704.76 | 691.92 |  |
| 67 | 13.4.13 | 撰写《数据字典》 | manual | 0.67d | 2017-11-26 | 2017-11-26 | 62 |  |  |  |  | 2017-11-07 | 2017-11-08 | 0.67d |  | 赵伟; 余泽伟; 陈启强 | 6h |  | 172.98 | 345.96 |  |
| 68 | 13.4.14 | 提交《用例与用例文档》、界面原型、ER图、《需求规格说明书》 | manual | 0.67d | 2017-12-04 | 2017-12-04 | 62 |  |  |  |  | 2017-12-04 | 2017-12-04 | 0.67d |  | 陈启强 | 2h |  | 57.66 | 57.66 |  |
| 69 | 13.4.15 | 第二次访谈教师代表 | manual | 0.67d | 2017-12-05 | 2017-12-05 | 62 |  |  |  |  | 2017-12-05 | 2017-12-05 | 0.67d |  | 李文杰; 赵伟; 余泽伟; 陈启强 | 8h |  | 234.92 | 230.64 |  |
| 70 | 13.4.16 | 修改界面原型 | manual | 1.33d | 2017-12-06 | 2017-12-07 | 69 |  |  |  |  | 2017-12-06 | 2017-12-07 | 1.33d |  | 余泽伟; 陈启强 | 8h |  | 230.64 | 115.32 |  |
| 71 | 13.4.17 | 修改《教师用例文档》 | manual | 0.67d | 2017-11-24 | 2017-11-24 | 64 |  |  |  |  | 2017-11-24 | 2017-11-24 | 0.67d |  | 李文杰 [80%] | 1.6h |  | 49.55 | 46.13 |  |
| 72 | 13.4.18 | 修改数据字典 | manual | 2d | 2017-11-08 A | 2017-11-11 | 67 | 75% | 0.5d |  |  | 2017-11-08 | 2017-11-11 | 2d |  | 李文杰 [80%]; 赵伟 [80%]; 余泽伟 [80%] | 14.4h | 10.8h | 425.42 | 415.15 | 319.07 |
| 73 | 13.4.19 | 撰写《软件用户手册》 | manual | 0.67d | 2017-11-21 | 2017-11-21 | 59 |  |  |  |  | 2017-11-21 | 2017-11-21 | 0.67d |  | 赵伟 | 2h |  | 57.66 | 57.66 |  |
| 74 | 13.4.20 | 修改《教师用例文档》 | manual | 1.33d | 2017-12-09 | 2017-12-10 | 64 |  |  |  |  | 2017-12-09 | 2017-12-10 | 1.33d |  | 李文杰 [80%] | 3.2h |  | 99.1 | 92.26 |  |
| 75 | 13.4.21 | 修改《学生用例文档》 | manual | 0.67d | 2017-12-10 | 2017-12-10 | 65 |  |  |  |  | 2017-12-10 | 2017-12-10 | 0.67d |  | 赵伟 [80%] | 1.6h |  | 46.13 | 46.13 |  |
| 76 | 13.4.22 | 修改《软件需求规格说明书》 | manual | 1.33d | 2017-11-24 | 2017-11-25 | 66 |  |  |  |  | 2017-11-24 | 2017-11-25 | 1.33d |  | 陈启强 [80%] | 3.2h |  | 92.26 | 92.26 |  |
| 77 | 13.4.23 | 修改《管理员用例文档》 | manual | 0.67d | 2017-11-22 | 2017-11-22 | 56 |  |  |  |  | 2017-11-22 | 2017-11-22 | 0.67d |  | 余泽伟 [80%] | 1.6h |  | 46.13 | 46.13 |  |
| 78 | 13.4.24 | 修改《教师用例文档》 | manual | 0.67d | 2017-12-16 | 2017-12-16 | 74 |  |  |  |  | 2017-12-16 | 2017-12-16 | 0.67d |  | 李文杰 [80%] | 1.6h |  | 49.55 | 46.13 |  |
| 79 | 13.4.25 | 修改《教师测试用例》 | manual | 0.67d | 2017-11-25 | 2017-11-25 | 71 |  |  |  |  | 2017-11-25 | 2017-11-25 | 0.67d |  | 李文杰 [80%] | 1.6h |  | 49.55 | 46.13 |  |
| 80 | 13.4.26 | 修改数据字典 | manual | 1.33d | 2017-12-15 | 2017-12-16 | 72 |  |  |  |  | 2017-12-15 | 2017-12-16 | 1.33d |  | 李文杰 [80%]; 陈启强 [80%] | 6.4h |  | 191.36 | 184.51 |  |
| 81 | 13.4.27 | 修改《软件用户手册》 | manual | 0.67d | 2017-12-15 | 2017-12-15 | 73 |  |  |  |  | 2017-12-15 | 2017-12-15 | 0.67d |  | 李文杰 | 2h |  | 61.94 | 57.66 |  |
| 82 | 13.4.28 | SRS评审 | milestone, manual | 3d | 2017-11-26 | 2017-11-30 | 76 |  |  |  |  | 2017-11-26 | 2017-11-30 | 3d |  | 陈启强; 李文杰; 余泽伟; 赵伟 | 36h |  | 1,057.14 | 12.97 |  |
| 83 | 13.4.29 | 修改《软件需求规格说明书》 | manual | 1.33d | 2017-12-23 | 2017-12-24 | 76 |  |  |  |  | 2017-12-23 | 2017-12-24 | 1.33d |  | 陈启强 [80%] | 3.2h |  | 92.26 | 92.26 |  |
| 84 | 13.4.30 | JAD会议 | manual | 0.67d | 2017-11-30 | 2017-12-01 | 82 |  |  |  |  | 2017-11-30 | 2017-12-01 | 0.67d |  | 李文杰; 赵伟; 余泽伟; 陈启强 | 8h |  | 234.92 | 230.64 |  |

| ID | WBS | Task | Type | Duration | Start | Finish | Predecessors | Baseline start | Baseline finish | Baseline duration | Resources | Work | Cost | Baseline cost |
| --- | --- | --- | --- | --- | --- | --- | --- | --- | --- | --- | --- | --- | --- | --- |
| 85 | 14 | **项目控制** |  | 5d | 2017-12-25 | 2017-12-31 |  | 2017-12-25 | 2017-12-31 | 5d |  | 29h | 848.91 | 490.11 |
| 86 | 14.1 | **需求变更** |  | 3.67d | 2017-12-25 | 2017-12-29 | 82 | 2017-12-25 | 2017-12-29 | 3.67d |  | 24h | 704.76 | 345.96 |
| 87 | 14.1.1 | 撰写《需求变更文档》并提交 | manual | 2d | 2017-12-01 | 2017-12-04 | 82 | 2017-12-01 | 2017-12-04 | 2d | 余泽伟; 陈启强 | 12h | 345.96 | 172.98 |
| 88 | 14.1.2 | 撰写《需求变更申请报告》并提交 | manual | 2d | 2017-12-01 | 2017-12-04 | 82 | 2017-12-01 | 2017-12-04 | 2d | 李文杰; 陈启强 | 12h | 358.8 | 172.98 |
| 89 | 14.2 | 撰写CCB章程 | manual | 1.67d | 2017-12-01 | 2017-12-03 | 82 | 2017-12-01 | 2017-12-03 | 1.67d | 赵伟 | 5h | 144.15 | 144.15 |
| 90 | 15 | **项目收尾** |  | 11.33d | 2018-01-01 | 2018-01-17 | 43 | 2018-01-01 | 2018-01-17 | 11.33d |  | 57.85h | 1,715.97 | 1,667.82 |
| 91 | 15.1 | 撰写《项目绩效评价》 | manual | 1d | 2018-01-02 | 2018-01-03 | 89 | 2018-01-02 | 2018-01-03 | 1d | 余泽伟 [150%] | 4.5h | 129.73 | 129.73 |
| 92 | 15.2 | 撰写《系统设计与实现计划》 | manual | 1d | 2018-01-01 | 2018-01-02 | 89 | 2018-01-01 | 2018-01-02 | 1d | 李文杰 [200%] | 6h | 185.82 | 172.98 |
| 93 | 15.3 | 撰写《软件概要设计说明》 | manual | 2.5d | 2018-01-04 | 2018-01-07 | 89 | 2018-01-04 | 2018-01-07 | 2.5d | 陈启强 | 7.5h | 216.22 | 216.22 |
| 94 | 15.4 | 撰写《测试计划》 | manual | 1.5d | 2018-01-04 | 2018-01-05 | 89 | 2018-01-04 | 2018-01-05 | 1.5d | 李文杰 [200%] | 9h | 278.73 | 259.47 |
| 95 | 15.5 | 撰写《安装部署计划》 | manual | 2.5d | 2018-01-04 | 2018-01-07 | 89 | 2018-01-04 | 2018-01-07 | 2.5d | 余泽伟 [150%] | 11.25h | 324.34 | 324.34 |
| 96 | 15.6 | 撰写《培训计划》 | manual | 2d | 2018-01-06 | 2018-01-08 | 89 | 2018-01-06 | 2018-01-08 | 2d | 李文杰 | 6h | 185.82 | 172.98 |
| 97 | 15.7 | 撰写《系统维护计划》 | manual | 1.5d | 2018-01-09 | 2018-01-10 | 89 | 2018-01-09 | 2018-01-10 | 1.5d | 赵伟 | 4.5h | 129.73 | 129.73 |
| 98 | 15.8 | 修改整理各类旧文档及PPT | manual | 0.5d | 2018-01-11 | 2018-01-11 | 97 | 2018-01-11 | 2018-01-11 | 0.5d | 赵伟; 陈启强; 李文杰; 余泽伟 | 6h | 176.19 | 172.98 |
| 99 | 15.9 | 撰写《项目总结报告》及PPT | manual | 0.5d | 2018-01-12 | 2018-01-12 | 98 | 2018-01-12 | 2018-01-12 | 0.5d | 陈启强 | 1.5h | 43.24 | 43.24 |
| 100 | 15.10 | 修改《项目总结报告》 | manual | 0.67d | 2018-01-13 | 2018-01-13 | 99 | 2018-01-13 | 2018-01-13 | 0.67d | 陈启强 [80%] | 1.6h | 46.13 | 46.13 |
| 101 | 15.11 | 评审 | milestone, manual | 0d | 2018-01-14 | 2018-01-14 | 100 | 2018-01-14 | 2018-01-14 | 0d | 陈启强; 李文杰; 余泽伟; 赵伟 |  |  |  |
